# Projet GL

How a schedule from Planner changed from version to version. A marks actual dates.

## Version 1 (saved 2023-01-17)

Note of the change: Planning sprint 3 + resize pdf planning 1 and 2

| ID | WBS | Task | Duration | Start | Finish | Predecessors | Complete | Constraint |
| --- | --- | --- | --- | --- | --- | --- | --- | --- |
| 1 | 1 | **Sprint 1: Hello World** |  | 2023-01-03 09:00 | 2023-01-05 19:30 |  | 85% |  |
| 2 |  | A. Analyse sujet + code | 0.75d | 2023-01-04 11:00 | 2023-01-04 18:30 | 19 | 100% |  |
| 3 |  | A. Scripts tests lexer | 0.12d | 2023-01-04 18:30 | 2023-01-04 19:30 | 2 | 100% |  |
| 4 |  | A. Scripts tests parser | 0.12d | 2023-01-05 09:00 | 2023-01-05 10:00 | 3 | 100% |  |
| 5 |  | A. Parser | 1d | 2023-01-05 10:00 | 2023-01-05 19:30 | 4 | 100% |  |
| 6 |  | A. Lexer | 0.12d | 2023-01-04 18:30 | 2023-01-04 19:30 | 2 | 100% |  |
| 7 |  | A. Décompilation | 1.12d | 2023-01-05 09:00 | 2023-01-05 19:30 | 6 | 100% |  |
| 8 |  | B. Analyse du sujet | 1.38d | 2023-01-04 11:00 | 2023-01-05 14:30 | 19 | 100% |  |
| 9 |  | B. Base de tests | 0.25d | 2023-01-05 14:30 | 2023-01-05 16:30 | 8 | 100% |  |
| 10 |  | B. Vérification contextuelle | 0.25d | 2023-01-05 16:30 | 2023-01-05 18:30 | 9 | 100% |  |
| 11 |  | B. Décoration de l'arbre | 0.12d | 2023-01-05 18:30 | 2023-01-05 19:30 | 10 | 100% |  |
| 12 |  | C. Analyse sujet + code | 1.5d | 2023-01-04 11:00 | 2023-01-05 15:30 | 19 | 100% |  |
| 13 |  | C. Parser CLI | 0.25d | 2023-01-05 15:30 | 2023-01-05 17:30 | 12 | 100% |  |
| 14 |  | C. Code assembleur | 0.25d | 2023-01-05 17:30 | 2023-01-05 19:30 | 13 | 100% |  |
| 15 |  | G. Charte d'équipe | 0.62d | 2023-01-03 09:00 | 2023-01-03 15:30 |  | 100% |  |
| 16 |  | G. SWOT + fiches indiv | 0.12d | 2023-01-03 15:30 | 2023-01-03 16:30 | 15 | 100% |  |
| 17 |  | G. Config outils | 0.25d | 2023-01-03 16:30 | 2023-01-03 18:30 | 16 | 100% |  |
| 18 |  | G. Répartition du travail | 0.25d | 2023-01-03 18:30 | 2023-01-04 10:00 | 17 | 100% |  |
| 19 |  | G. Planning | 0.12d | 2023-01-04 10:00 | 2023-01-04 11:00 | 18 | 100% |  |
| 20 | 2 | **Sprint 2: Sans objet** |  | 2023-01-06 09:00 | 2023-01-12 12:00 | 1 |  |  |
| 21 |  | A. Base de tests | 1.12d | 2023-01-07 16:00 | 2023-01-09 10:00 | 38 | 100% |  |
| 22 |  | A. Parser | 1.12d | 2023-01-09 10:00 | 2023-01-10 10:00 | 21 | 100% |  |
| 23 |  | A. Decompile | 1.12d | 2023-01-09 10:00 | 2023-01-10 10:00 | 21 | 100% |  |
| 24 |  | A. Doc | 0.38d | 2023-01-10 10:00 | 2023-01-10 14:30 | 23, 22 | 100% |  |
| 25 |  | B. Analyse sujet | 0.62d | 2023-01-07 16:00 | 2023-01-08 16:00 | 38 | 100% |  |
| 26 |  | B. Base de tests | 0.88d | 2023-01-08 16:00 | 2023-01-09 14:30 | 25 | 100% |  |
| 27 |  | B. Amélioration scripts tests | 0.5d | 2023-01-09 14:30 | 2023-01-09 18:30 | 26 | 100% |  |
| 28 |  | B. EnvironnementType | 0.12d | 2023-01-09 18:30 | 2023-01-09 19:30 | 27 | 100% |  |
| 29 |  | B. Passe 3 | 1.12d | 2023-01-10 09:00 | 2023-01-10 19:30 | 28 | 100% |  |
| 30 |  | B. Doc | 0.38d | 2023-01-11 09:00 | 2023-01-11 12:00 | 29 | 100% |  |
| 31 |  | C. Analyse sujet | 1.62d | 2023-01-07 16:00 | 2023-01-09 15:30 | 38 | 100% |  |
| 32 |  | C. Base + script de tests | 0.5d | 2023-01-09 15:30 | 2023-01-09 19:30 | 31 | 100% |  |
| 33 |  | C. Code assembleur | 1.12d | 2023-01-10 09:00 | 2023-01-10 19:30 | 32 | 100% |  |
| 34 |  | C. Doc | 0.38d | 2023-01-11 09:00 | 2023-01-11 12:00 | 33 | 100% |  |
| 35 |  | G. Préparation suivi 1 | 0.25d | 2023-01-06 09:00 | 2023-01-06 11:00 |  | 100% |  |
| 36 |  | G. Orga sprint | 0.25d | 2023-01-06 11:00 | 2023-01-06 14:30 | 35 | 100% |  |
| 37 |  | G. Spécification extension | 0.5d | 2023-01-06 14:30 | 2023-01-06 18:30 | 36 | 100% |  |
| 38 |  | G. Gestion des risques | 0.38d | 2023-01-06 18:30 | 2023-01-07 16:00 | 37 | 100% |  |
| 39 |  | G. Préparation suivi 2 | 1d | 2023-01-10 14:30 | 2023-01-11 12:00 | 24 | 100% |  |
| 40 |  | G. Clôture de sprint | 1.12d | 2023-01-11 12:00 | 2023-01-12 12:00 | 39 | 100% |  |
| 41 | 3 | **Sprint 3: Avec objet** |  | 2023-01-12 12:00 | 2023-01-18 15:30 | 20 |  |  |
| 42 |  | A. Classes tree | 0.25d | 2023-01-12 14:30 | 2023-01-12 16:30 | 63 |  |  |
| 43 |  | A. Parser | 0.25d | 2023-01-12 14:30 | 2023-01-12 16:30 | 63 |  |  |
| 44 |  | B. Analyse sujet | 0.62d | 2023-01-12 14:30 | 2023-01-12 19:30 | 63 |  |  |
| 45 |  | B. Base de tests | 1.12d | 2023-01-13 09:00 | 2023-01-13 19:30 | 44 |  |  |
| 46 |  | B. Verify 3 passes | 3.38d | 2023-01-14 14:00 | 2023-01-17 18:30 | 45 |  |  |
| 47 |  | B. Doc | 0.5d | 2023-01-17 18:30 | 2023-01-18 12:00 | 46 |  |  |
| 48 |  | C. Analyse sujet | 0.5d | 2023-01-14 16:00 | 2023-01-15 15:00 | 62 |  |  |
| 49 |  | C. Base de tests | 0.88d | 2023-01-15 15:00 | 2023-01-16 12:00 | 48 |  |  |
| 50 |  | C. CodeGen | 2.25d | 2023-01-16 12:00 | 2023-01-18 12:00 | 49 |  |  |
| 51 |  | C. Doc | 0.25d | 2023-01-18 12:00 | 2023-01-18 15:30 | 50 |  |  |
| 52 |  | E. Tests calc évidents + redondants | 0.62d | 2023-01-12 16:30 | 2023-01-13 11:00 | 42 |  |  |
| 53 |  | E. Calculs évidents | 1.62d | 2023-01-13 11:00 | 2023-01-15 15:00 | 52 |  |  |
| 54 |  | E. Calculs redondants | 1.75d | 2023-01-15 15:00 | 2023-01-17 10:00 | 53 |  |  |
| 55 |  | E. Doc calc évidents + redondants | 0.25d | 2023-01-17 10:00 | 2023-01-17 12:00 | 54 |  |  |
| 56 |  | E. Tests var inutiles | 1d | 2023-01-12 16:30 | 2023-01-13 15:30 | 43 |  |  |
| 57 |  | E. Var inutiles sans objet | 1.12d | 2023-01-13 15:30 | 2023-01-14 19:00 | 56 |  |  |
| 58 |  | E. Var inutiles avec objet | 2.5d | 2023-01-15 14:00 | 2023-01-17 16:30 | 57 |  |  |
| 59 |  | E. Doc var inutiles | 0.38d | 2023-01-17 16:30 | 2023-01-17 19:30 | 58 |  |  |
| 60 |  | E. Tests optim asm | 0.25d | 2023-01-12 14:30 | 2023-01-12 16:30 | 63 |  |  |
| 61 |  | E. Optim asm | 1.5d | 2023-01-12 16:30 | 2023-01-13 19:30 | 60 |  |  |
| 62 |  | E. Doc optim asm | 0.25d | 2023-01-14 14:00 | 2023-01-14 16:00 | 61 |  |  |
| 63 |  | G. Orga sprint 3 | 0.12d | 2023-01-12 12:00 | 2023-01-12 14:30 |  | 100% |  |
| 64 |  | G. Préparation suivi 3 | 0.5d | 2023-01-17 12:00 | 2023-01-17 17:30 | 55 |  |  |
| 65 |  | G. Impact énergétique | 0.25d | 2023-01-17 17:30 | 2023-01-17 19:30 | 64 |  |  |
| 66 |  | Rendu version intermédiaire | 0d | 2023-01-16 09:00 | 2023-01-16 00:00 |  |  | must start on 2023-01-16 00:00 |
| 67 |  | Rendu Final | 0d | 2023-01-23 09:00 | 2023-01-23 00:00 |  |  | must start on 2023-01-23 00:00 |
| 68 |  | Rendu documentation | 0d | 2023-01-23 09:00 | 2023-01-23 00:00 |  |  | must start on 2023-01-23 00:00 |
| 69 |  | Rendu Bilan | 0d | 2023-01-25 09:00 | 2023-01-25 00:00 |  |  | must start on 2023-01-25 00:00 |
| 70 |  | Soutenance | 0d | 2023-01-26 09:00 | 2023-01-26 00:00 |  |  | must start on 2023-01-26 00:00 |

## Version 2 (saved 2023-01-17)

Note of the change: Planning effectif suivi 3

Last finish stays 2023-01-26.

Changed:

| ID | Task | Start | Finish | Duration |
| --- | --- | --- | --- | --- |
| 42 | A. Classes tree |  | 2023-01-12 16:30 → 2023-01-12 19:30 | 0.25d → 0.62d |
| 52 | E. Tests calc évidents + redondants | 2023-01-12 16:30 → 2023-01-13 09:00 (+1d) | 2023-01-13 11:00 → 2023-01-13 15:30 |  |
| 53 | E. Calculs évidents | 2023-01-13 11:00 → 2023-01-13 15:30 | 2023-01-15 15:00 → 2023-01-15 17:00 | 1.62d → 1.5d |
| 54 | E. Calculs redondants | 2023-01-15 15:00 → 2023-01-15 17:00 | 2023-01-17 10:00 → 2023-01-17 12:00 |  |
| 55 | E. Doc calc évidents + redondants | 2023-01-17 10:00 → 2023-01-17 12:00 | 2023-01-17 12:00 → 2023-01-17 15:30 |  |
| 64 | G. Préparation suivi 3 | 2023-01-17 12:00 → 2023-01-17 15:30 | 2023-01-17 17:30 → 2023-01-17 19:30 |  |
| 65 | G. Impact énergétique | 2023-01-17 17:30 → 2023-01-18 09:00 (+1d) | 2023-01-17 19:30 → 2023-01-18 11:00 (+1d) |  |
