# Projet GL

How a schedule from Planner changed from version to version. A marks actual dates.

## Version 1 (saved 2023-01-07)

Note of the change: Merge remote-tracking branch 'origin/develop' into develop

| ID | WBS | Task | Duration | Start | Finish | Predecessors | Complete | Constraint |
| --- | --- | --- | --- | --- | --- | --- | --- | --- |
| 1 | 1 | **Sprint 1: Hello World** |  | 2023-01-03 09:00 | 2023-01-07 17:00 |  | 100% |  |
| 2 |  | A. Compréhension du sujet VV | 0.5d | 2023-01-04 15:30 | 2023-01-05 10:00 | 24 | 100% |  |
| 3 |  | A. Compréhension du sujet J | 0.5d | 2023-01-04 14:30 | 2023-01-04 18:30 | 21 | 100% |  |
| 4 |  | A. Analyse lexicale | 1d | 2023-01-05 09:00 | 2023-01-05 18:30 | 3 | 100% |  |
| 5 |  | A. Scripts tests lexical auto | 0.25d | 2023-01-05 10:00 | 2023-01-05 12:00 | 2 | 100% |  |
| 6 |  | A. Compréhension syntaxique VV | 0.5d | 2023-01-05 12:00 | 2023-01-05 17:30 | 5 | 100% |  |
| 7 |  | A. Compéhension syntaxique J | 0.5d | 2023-01-06 09:00 | 2023-01-06 14:30 | 4 | 100% |  |
| 8 |  | A. Construction de l'arbre | 0.5d | 2023-01-05 17:30 | 2023-01-06 12:00 | 6 | 100% |  |
| 9 |  | A. Décompilation de l'arbre sans objet | 1d | 2023-01-03 09:00 | 2023-01-03 18:30 |  | 100% |  |
| 10 |  | A. Scripts tests syntaxique auto | 0.25d | 2023-01-06 12:00 | 2023-01-06 15:30 | 8 |  |  |
| 11 |  | A. Scripts tests décompilation | 0d | 2023-01-06 14:30 | 2023-01-06 14:30 | 7 |  |  |
| 12 |  | B. Analyse du sujet | 2.5d | 2023-01-04 11:00 | 2023-01-06 16:30 | 23 | 100% |  |
| 13 |  | B. Création d'une base de tests valides | 0.25d | 2023-01-06 16:30 | 2023-01-06 18:30 | 12 | 100% |  |
| 14 |  | B. Fonction de vérification contextuelle | 0.25d | 2023-01-07 15:00 | 2023-01-07 17:00 | 15 | 100% |  |
| 15 |  | B. Décoration de l'arbre | 0.12d | 2023-01-07 14:00 | 2023-01-07 15:00 | 13 | 100% |  |
| 16 |  | C. Compréhension sujet |  | 2023-01-03 09:00 | 2023-01-03 18:30 |  | 100% |  |
| 17 |  | C. Analyse du code fourni |  | 2023-01-04 09:00 | 2023-01-04 18:30 | 16 | 100% |  |
| 18 |  | C. Parser options + source/cible |  | 2023-01-05 09:00 | 2023-01-05 18:30 | 17 | 100% |  |
| 19 |  | C. Génération du code assembleur |  | 2023-01-06 09:00 | 2023-01-06 18:30 | 18 | 100% |  |
| 20 |  | G. Charte d'équipe | 0.5d | 2023-01-03 09:00 | 2023-01-03 14:30 |  | 100% |  |
| 21 |  | G. Organisation Git | 0.25d | 2023-01-04 11:00 | 2023-01-04 14:30 | 23 | 86% |  |
| 22 |  | G. SWOT + fiches indiv | 0.12d | 2023-01-03 14:30 | 2023-01-03 15:30 | 20 | 100% |  |
| 23 |  | G. Création des users stories | 0.25d | 2023-01-04 09:00 | 2023-01-04 11:00 | 25 | 100% |  |
| 24 |  | G. Planning | 0.38d | 2023-01-04 11:00 | 2023-01-04 15:30 | 23 | 100% |  |
| 25 |  | G. Config outils | 0.38d | 2023-01-03 15:30 | 2023-01-03 18:30 | 22 | 100% |  |
| 26 | 2 | **Sprint 2: Sans objet** |  | 2023-01-07 17:00 | 2023-01-10 11:30 | 1 |  |  |
| 27 |  | ... |  | 2023-01-07 17:00 | 2023-01-10 11:30 |  |  |  |
| 28 | 3 | **Compilateur sans objet** |  | 2023-01-10 11:30 | 2023-01-12 11:30 | 26 |  |  |
| 29 |  | ... |  | 2023-01-10 11:30 | 2023-01-12 11:30 |  |  |  |
| 30 |  | Compilateur pour la totalité du langage |  | 2023-01-03 09:00 | 2023-01-05 18:30 |  |  |  |
| 31 |  | Rendu version intermédiaire | 0d | 2023-01-16 09:00 | 2023-01-16 00:00 |  |  | must start on 2023-01-16 00:00 |
| 32 |  | Rendu Final | 0d | 2023-01-23 09:00 | 2023-01-23 00:00 |  |  | must start on 2023-01-23 00:00 |
| 33 |  | Rendu Bilan | 0d | 2023-01-25 09:00 | 2023-01-25 00:00 |  |  | must start on 2023-01-25 00:00 |
| 34 |  | Rendu documentation | 0d | 2023-01-23 09:00 | 2023-01-23 00:00 |  |  | must start on 2023-01-23 00:00 |
| 35 |  | Soutenance | 0d | 2023-01-26 09:00 | 2023-01-26 00:00 |  |  | must start on 2023-01-26 00:00 |

## Version 2 (saved 2023-01-10)

Note of the change: Planning sprint 2

Last finish stays 2023-01-26. Complete tasks 21 → 20.

Added:

| ID | Task | Duration | Start | Finish | Predecessors | Resources |
| --- | --- | --- | --- | --- | --- | --- |
| 12 | C. Analyse sujet + code | 1.5d | 2023-01-04 11:00 | 2023-01-05 15:30 | 19 | Virgile |
| 22 | A. Parser | 1.12d | 2023-01-09 09:00 | 2023-01-09 19:30 | 21 | Vianney |
| 24 | B. Analyse sujet | 1.12d | 2023-01-07 15:00 | 2023-01-08 19:00 | 35 | Logan [50%]; Nils [50%] |
| 25 | B. Base de tests | 0.88d | 2023-01-09 09:00 | 2023-01-09 17:30 | 24 | Logan [50%]; Nils [50%] |
| 26 | B. Amélioration scripts tests | 0.5d | 2023-01-09 17:30 | 2023-01-10 11:00 | 25 | Logan [50%]; Nils [50%] |
| 27 | B. Passe 3 | 2.25d | 2023-01-10 11:00 | 2023-01-12 11:00 | 26 | Logan [50%]; Nils [50%] |
| 31 | C. Code assembleur | 2.25d | 2023-01-10 09:00 | 2023-01-11 19:30 | 30 | Virgile |
| 32 | G. Préparation suivi 1 | 0.25d | 2023-01-06 09:00 | 2023-01-06 11:00 |  | Jorge [20%]; Logan [20%]; Nils [20%]; Virgile [20%]; Vianney [20%] |
| 33 | G. Organisation sprint | 0.25d | 2023-01-06 11:00 | 2023-01-06 14:30 | 32 | Jorge [20%]; Logan [20%]; Nils [20%]; Virgile [20%]; Vianney [20%] |
| 34 | G. Spécification extension | 0.38d | 2023-01-06 14:30 | 2023-01-06 17:30 | 33 | Jorge [20%]; Logan [20%]; Nils [20%]; Virgile [20%]; Vianney [20%] |
| 35 | G. Gestion des risques | 0.38d | 2023-01-06 17:30 | 2023-01-07 15:00 | 34 | Jorge [20%]; Logan [20%]; Nils [20%]; Virgile [20%]; Vianney [20%] |
| 36 | **Sprint 3: Avec objet** |  | 2023-01-12 15:30 | 2023-01-20 14:30 | 20 | Jorge; Logan; Nils; Virgile; Vianney |

Removed: 8 A. Construction de l'arbre; 11 A. Scripts tests décompilation; 16 C. Compréhension sujet; 17 C. Analyse du code fourni; 19 C. Génération du code assembleur

Changed:

| ID | Task | Start | Finish | Duration | Complete | Predecessors | Other |
| --- | --- | --- | --- | --- | --- | --- | --- |
| 1 | **Sprint 1: Hello World** |  | 2023-01-07 17:00 → 2023-01-05 19:30 (-2d) |  | 100% → 85% |  |  |
| 2 | A. Analyse sujet + code | 2023-01-04 15:30 → 2023-01-04 11:00 | 2023-01-05 10:00 → 2023-01-04 18:30 (-1d) | 0.5d → 0.75d |  |  | was named A. Compréhension du sujet VV; resources Vianney → Jorge [50%]; Vianney [50%] |
| 3 | A. Scripts tests lexer | 2023-01-04 14:30 → 2023-01-04 18:30 | 2023-01-04 18:30 → 2023-01-04 19:30 | 0.5d → 0.12d |  | 21 → 2 | was named A. Compréhension du sujet J; resources Jorge → Vianney |
| 4 | A. Scripts tests parser |  | 2023-01-05 18:30 → 2023-01-05 10:00 | 1d → 0.12d |  |  | was named A. Analyse lexicale; resources Jorge → Vianney |
| 5 | A. Parser |  | 2023-01-05 12:00 → 2023-01-05 19:30 | 0.25d → 1d |  | 2 → 4 | was named A. Scripts tests lexical auto |
| 6 | A. Lexer | 2023-01-05 12:00 → 2023-01-04 18:30 (-1d) | 2023-01-05 17:30 → 2023-01-04 19:30 (-1d) | 0.5d → 0.12d |  | 5 → 2 | was named A. Compréhension syntaxique VV; resources Vianney → Jorge |
| 7 | A. Décompilation | 2023-01-06 09:00 → 2023-01-05 09:00 (-1d) | 2023-01-06 14:30 → 2023-01-05 19:30 (-1d) | 0.5d → 1.12d |  | 4 → 6 | was named A. Compéhension syntaxique J |
| 8 | B. Analyse du sujet |  | 2023-01-06 16:30 → 2023-01-05 14:30 (-1d) | 2.5d → 1.38d |  | 23 → 19 |  |
| 9 | B. Base de tests | 2023-01-03 09:00 → 2023-01-05 14:30 (+2d) | 2023-01-03 18:30 → 2023-01-05 16:30 (+2d) | 1d → 0.25d |  | none → 8 | was named A. Décompilation de l'arbre sans objet; resources Jorge → Logan [50%]; Nils [50%] |
| 10 | B. Vérification contextuelle | 2023-01-06 12:00 → 2023-01-05 16:30 (-1d) | 2023-01-06 15:30 → 2023-01-05 18:30 (-1d) |  | 0% → 100% | A. Construction de l'arbre → 9 | was named A. Scripts tests syntaxique auto; resources Vianney → Logan [50%]; Nils [50%] |
| 11 | B. Décoration de l'arbre | 2023-01-07 14:00 → 2023-01-05 18:30 (-2d) | 2023-01-07 15:00 → 2023-01-05 19:30 (-2d) |  |  | 13 → 10 |  |
| 13 | C. Parser CLI | 2023-01-06 16:30 → 2023-01-05 15:30 (-1d) | 2023-01-06 18:30 → 2023-01-05 17:30 (-1d) |  |  | 8 → 12 | was named B. Création d'une base de tests valides; resources Logan [50%]; Nils [50%] → Virgile |
| 14 | C. Code assembleur | 2023-01-07 15:00 → 2023-01-05 17:30 (-2d) | 2023-01-07 17:00 → 2023-01-05 19:30 (-2d) |  |  | 11 → 13 | was named B. Fonction de vérification contextuelle; resources Logan [50%]; Nils [50%] → Virgile |
| 15 | G. Charte d'équipe |  | 2023-01-03 14:30 → 2023-01-03 15:30 | 0.5d → 0.62d |  |  |  |
| 16 | G. SWOT + fiches indiv | 2023-01-03 14:30 → 2023-01-03 15:30 | 2023-01-03 15:30 → 2023-01-03 16:30 |  |  |  |  |
| 17 | G. Config outils | 2023-01-03 15:30 → 2023-01-03 16:30 |  | 0.38d → 0.25d |  |  | resources Jorge [7%]; Logan [7%]; Nils [7%]; Virgile [7%]; Vianney [7%] → Jorge [20%]; Logan [20%]; Nils [20%]; Virgile [20%]; Vianney [20%] |
| 18 | G. Répartition du travail | 2023-01-05 09:00 → 2023-01-03 18:30 (-2d) | 2023-01-05 18:30 → 2023-01-04 10:00 (-1d) | none → 0.25d |  | C. Analyse du code fourni → 17 | was named C. Parser options + source/cible; resources Virgile → Jorge [20%]; Logan [20%]; Nils [20%]; Virgile [20%]; Vianney [20%] |
| 19 | G. Planning | 2023-01-04 11:00 → 2023-01-04 10:00 | 2023-01-04 15:30 → 2023-01-04 11:00 | 0.38d → 0.12d |  | 23 → 18 | resources Vianney [67%] → Jorge [20%]; Logan [20%]; Nils [20%]; Virgile [20%]; Vianney [20%] |
| 20 | **Sprint 2: Sans objet** | 2023-01-07 17:00 → 2023-01-06 09:00 (-1d) | 2023-01-10 11:30 → 2023-01-12 15:30 (+2d) |  |  |  |  |
| 21 | A. Base de tests | 2023-01-04 11:00 → 2023-01-07 15:00 (+3d) | 2023-01-04 14:30 → 2023-01-08 19:00 (+4d) | 0.25d → 1.12d | 86% → 0% | 23 → 35 | was named G. Organisation Git; resources Jorge → Jorge [50%]; Vianney [50%] |
| 23 | A. Decompile | 2023-01-04 09:00 → 2023-01-09 09:00 (+5d) | 2023-01-04 11:00 → 2023-01-09 19:30 (+5d) | 0.25d → 1.12d | 100% → 0% | 17 → 21 | was named G. Création des users stories; resources Jorge [20%]; Logan [20%]; Nils [20%]; Virgile [20%]; Vianney [20%] → Jorge |
| 28 | B. EnvironnementType | 2023-01-10 11:30 → 2023-01-12 11:00 (+2d) | 2023-01-12 11:30 → 2023-01-12 15:30 | none → 0.38d |  | 20 → 27 | was named Compilateur sans objet; resources Jorge; Logan; Nils; Virgile; Vianney → Logan [50%]; Nils [50%] |
| 29 | C. Analyse sujet | 2023-01-10 11:30 → 2023-01-07 15:00 (-3d) | 2023-01-12 11:30 → 2023-01-08 19:00 (-4d) | none → 1.12d |  | none → 35 | was named ...; resources none → Virgile |
| 30 | C. Base + script de tests | 2023-01-03 09:00 → 2023-01-09 09:00 (+6d) | 2023-01-05 18:30 → 2023-01-09 19:30 (+4d) | none → 1.12d |  | none → 29 | was named Compilateur pour la totalité du langage; resources none → Virgile |
| 37 | ... | 2023-01-07 17:00 → 2023-01-12 15:30 (+5d) | 2023-01-10 11:30 → 2023-01-20 14:30 (+10d) | none → 7.88d |  |  |  |

## Version 3 (saved 2023-01-12)

Note of the change: Merge branch 'feature/etape-B-mockito' into feature/etape-B-objet

Last finish stays 2023-01-26. Complete tasks 20 → 34.

Added:

| ID | Task | Duration | Start | Finish | Predecessors | Resources |
| --- | --- | --- | --- | --- | --- | --- |
| 36 | G. Préparation suivi 2 | 1d | 2023-01-10 10:00 | 2023-01-10 19:30 | 23, 22 | Jorge [50%]; Vianney [50%] |
| 37 | G. Clôture de sprint | 1.12d | 2023-01-11 09:00 | 2023-01-11 19:30 | 36 | Jorge [20%]; Logan [20%]; Nils [20%]; Virgile [20%]; Vianney [20%] |

Changed:

| ID | Task | Start | Finish | Duration | Complete | Predecessors | Other |
| --- | --- | --- | --- | --- | --- | --- | --- |
| 1 | **Sprint 1: Hello World** |  |  |  |  |  | resources Jorge; Logan; Nils; Virgile; Vianney → none |
| 20 | **Sprint 2: Sans objet** |  | 2023-01-12 15:30 → 2023-01-11 19:30 (-1d) |  |  |  | resources Jorge; Logan; Nils; Virgile; Vianney → none |
| 21 | A. Base de tests | 2023-01-07 15:00 → 2023-01-07 16:00 | 2023-01-08 19:00 → 2023-01-09 10:00 (+1d) |  | 0% → 100% |  |  |
| 22 | A. Parser | 2023-01-09 09:00 → 2023-01-09 10:00 | 2023-01-09 19:30 → 2023-01-10 10:00 (+1d) |  | 0% → 100% |  |  |
| 23 | A. Decompile | 2023-01-09 09:00 → 2023-01-09 10:00 | 2023-01-09 19:30 → 2023-01-10 10:00 (+1d) |  | 0% → 100% |  |  |
| 24 | B. Analyse sujet | 2023-01-07 15:00 → 2023-01-07 16:00 | 2023-01-08 19:00 → 2023-01-08 16:00 | 1.12d → 0.62d | 0% → 100% |  |  |
| 25 | B. Base de tests | 2023-01-09 09:00 → 2023-01-08 16:00 (-1d) | 2023-01-09 17:30 → 2023-01-09 14:30 |  | 0% → 100% |  |  |
| 26 | B. Amélioration scripts tests | 2023-01-09 17:30 → 2023-01-09 14:30 | 2023-01-10 11:00 → 2023-01-09 18:30 (-1d) |  | 0% → 100% |  |  |
| 27 | B. EnvironnementType | 2023-01-12 11:00 → 2023-01-09 18:30 (-3d) | 2023-01-12 15:30 → 2023-01-09 19:30 (-3d) | 0.38d → 0.12d | 0% → 100% | 28 → 26 |  |
| 28 | B. Passe 3 | 2023-01-10 11:00 → 2023-01-10 09:00 | 2023-01-12 11:00 → 2023-01-10 19:30 (-2d) | 2.25d → 1.12d | 0% → 100% | 26 → 27 |  |
| 29 | C. Analyse sujet | 2023-01-07 15:00 → 2023-01-07 16:00 | 2023-01-08 19:00 → 2023-01-09 15:30 (+1d) | 1.12d → 1.62d | 0% → 100% |  |  |
| 30 | C. Base + script de tests | 2023-01-09 09:00 → 2023-01-09 15:30 |  | 1.12d → 0.5d | 0% → 100% |  |  |
| 31 | C. Code assembleur |  | 2023-01-11 19:30 → 2023-01-10 19:30 (-1d) | 2.25d → 1.12d | 0% → 100% |  |  |
| 34 | G. Spécification extension |  | 2023-01-06 17:30 → 2023-01-06 18:30 | 0.38d → 0.5d | 0% → 100% |  |  |
| 35 | G. Gestion des risques | 2023-01-06 17:30 → 2023-01-06 18:30 | 2023-01-07 15:00 → 2023-01-07 16:00 |  | 0% → 100% |  |  |
| 38 | **Sprint 3: Avec objet** | 2023-01-12 15:30 → 2023-01-12 09:00 | 2023-01-20 14:30 → 2023-01-19 18:30 (-1d) |  |  |  | resources Jorge; Logan; Nils; Virgile; Vianney → none |
| 39 | ... | 2023-01-12 15:30 → 2023-01-12 09:00 | 2023-01-20 14:30 → 2023-01-19 18:30 (-1d) |  |  |  |  |

## Version 4 (saved 2023-01-16)

Note of the change: Merge branch 'develop' of nicolasflamel.ensimag.fr:gl2023/gr1/gl03 into develop

Last finish stays 2023-01-26. Complete tasks 34 → 37.

Added:

| ID | Task | Duration | Start | Finish | Predecessors | Resources |
| --- | --- | --- | --- | --- | --- | --- |
| 24 | A. Doc | 0.38d | 2023-01-10 10:00 | 2023-01-10 14:30 | 23, 22 | Jorge [50%]; Vianney [50%] |
| 30 | B. Doc | 0.38d | 2023-01-11 09:00 | 2023-01-11 12:00 | 29 | Logan [50%]; Nils [50%] |
| 34 | C. Doc | 0.38d | 2023-01-11 09:00 | 2023-01-11 12:00 | 33 | Virgile |

Changed:

| ID | Task | Start | Finish | Predecessors |
| --- | --- | --- | --- | --- |
| 20 | **Sprint 2: Sans objet** |  | 2023-01-11 19:30 → 2023-01-12 12:00 (+1d) |  |
| 39 | G. Préparation suivi 2 | 2023-01-10 10:00 → 2023-01-10 14:30 | 2023-01-10 19:30 → 2023-01-11 12:00 (+1d) | 23, 22 → 24 |
| 40 | G. Clôture de sprint | 2023-01-11 09:00 → 2023-01-11 12:00 | 2023-01-11 19:30 → 2023-01-12 12:00 (+1d) |  |
| 41 | **Sprint 3: Avec objet** | 2023-01-12 09:00 → 2023-01-12 12:00 | 2023-01-19 18:30 → 2023-01-20 11:00 (+1d) |  |
| 42 | ... | 2023-01-12 09:00 → 2023-01-12 12:00 | 2023-01-19 18:30 → 2023-01-20 11:00 (+1d) |  |
