# Projet GL

How a schedule from Planner changed from version to version. A marks actual dates.

## Version 1 (saved 2022-12-27)

Note of the change: Import initial du Projet GL

| ID | WBS | Task | Duration | Start | Finish | Predecessors | Constraint |
| --- | --- | --- | --- | --- | --- | --- | --- |
| 1 | 1 | **Analyse lexicosyntaxique** |  | 2023-01-03 | 2023-01-04 |  |  |
| 2 |  | Lexeur |  | 2023-01-03 | 2023-01-04 |  |  |
| 3 |  | Parseur |  | 2023-01-03 | 2023-01-04 |  |  |
| 4 | 2 | **Compilateur gérant Hello World** |  | 2023-01-05 | 2023-01-10 | 1 |  |
| 5 |  | Tests |  | 2023-01-05 | 2023-01-09 |  |  |
| 6 |  | Analyse contextuelle |  | 2023-01-05 | 2023-01-09 |  |  |
| 7 |  | Génération de code |  | 2023-01-05 | 2023-01-10 |  |  |
| 8 |  | ... |  | 2023-01-05 | 2023-01-06 |  |  |
| 9 | 3 | **Compilateur sans objet** |  | 2023-01-10 | 2023-01-16 | 4 |  |
| 10 |  | ... |  | 2023-01-10 | 2023-01-12 |  |  |
| 11 |  | ... |  | 2023-01-10 | 2023-01-16 |  |  |
| 12 |  | Compilateur pour la totalité du langage |  | 2023-01-03 | 2023-01-05 |  |  |
| 13 |  | Rendu version intermédiaire | 0d | 2023-01-16 | 2023-01-16 |  | must start on 2023-01-16 |
| 14 |  | Rendu Final | 0d | 2023-01-23 | 2023-01-23 |  | must start on 2023-01-23 |
| 15 |  | Rendu Bilan | 0d | 2023-01-25 | 2023-01-25 |  | must start on 2023-01-25 |
| 16 |  | Rendu documentation | 0d | 2023-01-23 | 2023-01-23 |  | must start on 2023-01-23 |
| 17 |  | Soutenance | 0d | 2023-01-26 | 2023-01-26 |  | must start on 2023-01-26 |

## Version 2 (saved 2023-01-19)

Note of the change: Merge remote-tracking branch 'origin/develop' into feature/etape-C-objet

Last finish stays 2023-01-26. Complete tasks 0 → 59.

Added:

| ID | Task | Duration | Start | Finish | Predecessors | Resources |
| --- | --- | --- | --- | --- | --- | --- |
| 11 | B. Décoration de l'arbre | 0.12d | 2023-01-05 18:30 | 2023-01-05 19:30 | 10 | Logan [50%]; Nils [50%] |
| 14 | C. Code assembleur | 0.25d | 2023-01-05 17:30 | 2023-01-05 19:30 | 13 | Virgile |
| 15 | G. Charte d'équipe | 0.62d | 2023-01-03 09:00 | 2023-01-03 15:30 |  | Jorge [20%]; Logan [20%]; Nils [20%]; Virgile [20%]; Vianney [20%] |
| 16 | G. SWOT + fiches indiv | 0.12d | 2023-01-03 15:30 | 2023-01-03 16:30 | 15 | Jorge [20%]; Logan [20%]; Nils [20%]; Virgile [20%]; Vianney [20%] |
| 17 | G. Config outils | 0.25d | 2023-01-03 16:30 | 2023-01-03 18:30 | 16 | Jorge [20%]; Logan [20%]; Nils [20%]; Virgile [20%]; Vianney [20%] |
| 18 | G. Répartition du travail | 0.25d | 2023-01-03 18:30 | 2023-01-04 10:00 | 17 | Jorge [20%]; Logan [20%]; Nils [20%]; Virgile [20%]; Vianney [20%] |
| 19 | G. Planning | 0.12d | 2023-01-04 10:00 | 2023-01-04 11:00 | 18 | Jorge [20%]; Logan [20%]; Nils [20%]; Virgile [20%]; Vianney [20%] |
| 20 | **Sprint 2: Sans objet** |  | 2023-01-06 09:00 | 2023-01-12 12:00 | 1 |  |
| 21 | A. Base de tests | 1.12d | 2023-01-07 16:00 | 2023-01-09 10:00 | 38 | Jorge [50%]; Vianney [50%] |
| 22 | A. Parser | 1.12d | 2023-01-09 10:00 | 2023-01-10 10:00 | 21 | Vianney |
| 23 | A. Decompile | 1.12d | 2023-01-09 10:00 | 2023-01-10 10:00 | 21 | Jorge |
| 24 | A. Doc | 0.38d | 2023-01-10 10:00 | 2023-01-10 14:30 | 23, 22 | Jorge [50%]; Vianney [50%] |
| 25 | B. Analyse sujet | 0.62d | 2023-01-07 16:00 | 2023-01-08 16:00 | 38 | Logan [50%]; Nils [50%] |
| 26 | B. Base de tests | 0.88d | 2023-01-08 16:00 | 2023-01-09 14:30 | 25 | Logan [50%]; Nils [50%] |
| 27 | B. Amélioration scripts tests | 0.5d | 2023-01-09 14:30 | 2023-01-09 18:30 | 26 | Logan [50%]; Nils [50%] |
| 28 | B. EnvironnementType | 0.12d | 2023-01-09 18:30 | 2023-01-09 19:30 | 27 | Logan [50%]; Nils [50%] |
| 29 | B. Passe 3 | 1.12d | 2023-01-10 09:00 | 2023-01-10 19:30 | 28 | Logan [50%]; Nils [50%] |
| 30 | B. Doc | 0.38d | 2023-01-11 09:00 | 2023-01-11 12:00 | 29 | Logan [50%]; Nils [50%] |
| 31 | C. Analyse sujet | 1.62d | 2023-01-07 16:00 | 2023-01-09 15:30 | 38 | Virgile |
| 32 | C. Base + script de tests | 0.5d | 2023-01-09 15:30 | 2023-01-09 19:30 | 31 | Virgile |
| 33 | C. Code assembleur | 1.12d | 2023-01-10 09:00 | 2023-01-10 19:30 | 32 | Virgile |
| 34 | C. Doc | 0.38d | 2023-01-11 09:00 | 2023-01-11 12:00 | 33 | Virgile |
| 35 | G. Préparation suivi 1 | 0.25d | 2023-01-06 09:00 | 2023-01-06 11:00 |  | Jorge [20%]; Logan [20%]; Nils [20%]; Virgile [20%]; Vianney [20%] |
| 36 | G. Orga sprint | 0.25d | 2023-01-06 11:00 | 2023-01-06 14:30 | 35 | Jorge [20%]; Logan [20%]; Nils [20%]; Virgile [20%]; Vianney [20%] |
| 37 | G. Spécification extension | 0.5d | 2023-01-06 14:30 | 2023-01-06 18:30 | 36 | Jorge [20%]; Logan [20%]; Nils [20%]; Virgile [20%]; Vianney [20%] |
| 38 | G. Gestion des risques | 0.38d | 2023-01-06 18:30 | 2023-01-07 16:00 | 37 | Jorge [20%]; Logan [20%]; Nils [20%]; Virgile [20%]; Vianney [20%] |
| 39 | G. Préparation suivi 2 | 1d | 2023-01-10 14:30 | 2023-01-11 12:00 | 24 | Jorge [50%]; Vianney [50%] |
| 40 | G. Clôture de sprint | 1.12d | 2023-01-11 12:00 | 2023-01-12 12:00 | 39 | Jorge [20%]; Logan [20%]; Nils [20%]; Virgile [20%]; Vianney [20%] |
| 41 | **Sprint 3: Avec objet** |  | 2023-01-12 12:00 | 2023-01-19 14:30 | 20 |  |
| 42 | A. Classes tree | 0.62d | 2023-01-12 14:30 | 2023-01-12 19:30 | 64 | Jorge |
| 43 | A. Parser | 0.25d | 2023-01-12 14:30 | 2023-01-12 16:30 | 64 | Vianney |
| 44 | B. Analyse sujet | 0.62d | 2023-01-12 14:30 | 2023-01-12 19:30 | 64 | Logan [50%]; Nils [50%] |
| 45 | B. Base de tests | 1.12d | 2023-01-13 09:00 | 2023-01-13 19:30 | 44 | Logan [50%]; Nils [50%] |
| 46 | B. Verify 3 passes | 3.38d | 2023-01-14 14:00 | 2023-01-17 18:30 | 45 | Logan [50%]; Nils [50%] |
| 47 | B. Doc | 0.5d | 2023-01-17 18:30 | 2023-01-18 12:00 | 46 | Logan [50%]; Nils [50%] |
| 48 | C. Analyse sujet | 0.5d | 2023-01-16 09:00 | 2023-01-16 14:30 | 55 | Virgile |
| 49 | C. Base de tests | 0.88d | 2023-01-16 14:30 | 2023-01-17 11:00 | 48 | Virgile |
| 50 | C. CodeGen | 2.25d | 2023-01-17 11:00 | 2023-01-19 11:00 | 49 | Virgile |
| 51 | C. Doc | 0.25d | 2023-01-19 11:00 | 2023-01-19 14:30 | 50 | Virgile |
| 52 | E. Tests calc évidents + redondants | 0.62d | 2023-01-16 09:00 | 2023-01-16 15:30 | 55 | Jorge |
| 53 | E. Recherche calc redondants | 1.12d | 2023-01-13 09:00 | 2023-01-13 19:30 | 42 | Jorge |
| 54 | E. Calculs redondants | 1.75d | 2023-01-17 16:30 | 2023-01-19 11:00 | 66 | Jorge |
| 55 | E. Calculs évidents | 1.25d | 2023-01-14 14:00 | 2023-01-15 19:00 | 53, 63 | Jorge [50%]; Virgile [50%] |
| 56 | E. Doc calc évidents + redondants | 0.25d | 2023-01-19 11:00 | 2023-01-19 14:30 | 54 | Jorge |
| 57 | E. Tests var inutiles | 1d | 2023-01-12 16:30 | 2023-01-13 15:30 | 43 | Vianney |
| 58 | E. Var inutiles sans objet | 1.12d | 2023-01-13 15:30 | 2023-01-14 19:00 | 57 | Vianney |
| 59 | E. Var inutiles avec objet | 2.88d | 2023-01-15 14:00 | 2023-01-17 19:30 | 58 | Vianney |
| 60 | E. Doc var inutiles | 0.38d | 2023-01-18 09:00 | 2023-01-18 12:00 | 59 | Vianney |
| 61 | E. Tests optim asm | 0.25d | 2023-01-12 14:30 | 2023-01-12 16:30 | 64 | Virgile |
| 62 | E. Optim asm | 1.25d | 2023-01-12 16:30 | 2023-01-13 17:30 | 61 | Virgile |
| 63 | E. Doc optim asm | 0.25d | 2023-01-13 17:30 | 2023-01-13 19:30 | 62 | Virgile |
| 64 | G. Orga sprint 3 | 0.12d | 2023-01-12 12:00 | 2023-01-12 14:30 |  | Jorge [20%]; Logan [20%]; Nils [20%]; Virgile [20%]; Vianney [20%] |
| 65 | G. Préparation suivi 3 | 0.5d | 2023-01-16 15:30 | 2023-01-16 19:30 | 52 | Jorge |
| 66 | G. Impact énergétique | 0.75d | 2023-01-17 09:00 | 2023-01-17 16:30 | 65 | Jorge |

Changed:

| ID | Task | Start | Finish | Duration | Complete | Predecessors | Other |
| --- | --- | --- | --- | --- | --- | --- | --- |
| 1 | **Sprint 1: Hello World** | 2023-01-03 → 2023-01-03 09:00 | 2023-01-04 → 2023-01-05 19:30 (+1d) |  | 0% → 85% |  | was named Analyse lexicosyntaxique |
| 2 | A. Analyse sujet + code | 2023-01-03 → 2023-01-04 11:00 (+1d) | 2023-01-04 → 2023-01-04 18:30 | none → 0.75d | 0% → 100% | none → 19 | was named Lexeur; resources Etudiant 2; Etudiant 1 → Jorge [50%]; Vianney [50%] |
| 3 | A. Scripts tests lexer | 2023-01-03 → 2023-01-04 18:30 (+1d) | 2023-01-04 → 2023-01-04 19:30 | none → 0.12d | 0% → 100% | none → 2 | was named Parseur; resources Etudiant 4; Etudiant 3 → Vianney |
| 4 | A. Scripts tests parser | 2023-01-05 → 2023-01-05 09:00 | 2023-01-10 → 2023-01-05 10:00 (-5d) | none → 0.12d | 0% → 100% | 1 → 3 | was named Compilateur gérant Hello World; resources Etudiant 5; Etudiant 4; Etudiant 3; Etudiant 2; Etudiant 1 → Vianney |
| 5 | A. Parser | 2023-01-05 → 2023-01-05 10:00 | 2023-01-09 → 2023-01-05 19:30 (-4d) | none → 1d | 0% → 100% | none → 4 | was named Tests; resources none → Vianney |
| 6 | A. Lexer | 2023-01-05 → 2023-01-04 18:30 (-1d) | 2023-01-09 → 2023-01-04 19:30 (-5d) | none → 0.12d | 0% → 100% | none → 2 | was named Analyse contextuelle; resources none → Jorge |
| 7 | A. Décompilation | 2023-01-05 → 2023-01-05 09:00 | 2023-01-10 → 2023-01-05 19:30 (-5d) | none → 1.12d | 0% → 100% | none → 6 | was named Génération de code; resources Etudiant 2 → Jorge |
| 8 | B. Analyse du sujet | 2023-01-05 → 2023-01-04 11:00 (-1d) | 2023-01-06 → 2023-01-05 14:30 (-1d) | none → 1.38d | 0% → 100% | none → 19 | was named ...; resources none → Logan [50%]; Nils [50%] |
| 9 | B. Base de tests | 2023-01-10 → 2023-01-05 14:30 (-5d) | 2023-01-16 → 2023-01-05 16:30 (-11d) | none → 0.25d | 0% → 100% | 4 → 8 | was named Compilateur sans objet; resources Etudiant 4; Etudiant 3; Etudiant 2; Etudiant 1 → Logan [50%]; Nils [50%] |
| 10 | B. Vérification contextuelle | 2023-01-10 → 2023-01-05 16:30 (-5d) | 2023-01-12 → 2023-01-05 18:30 (-7d) | none → 0.25d | 0% → 100% | none → 9 | was named ...; resources none → Logan [50%]; Nils [50%] |
| 12 | C. Analyse sujet + code | 2023-01-10 → 2023-01-04 11:00 (-6d) | 2023-01-16 → 2023-01-05 15:30 (-11d) | none → 1.5d | 0% → 100% | none → 19 | was named ...; resources none → Virgile |
| 13 | C. Parser CLI | 2023-01-03 → 2023-01-05 15:30 (+2d) | 2023-01-05 → 2023-01-05 17:30 | none → 0.25d | 0% → 100% | none → 12 | was named Compilateur pour la totalité du langage; resources none → Virgile |
| 67 | Rendu version intermédiaire | 2023-01-16 → 2023-01-16 09:00 | 2023-01-16 → 2023-01-16 00:00 |  |  |  | constraint must start on 2023-01-16 → must start on 2023-01-16 00:00 |
| 68 | Rendu Final | 2023-01-23 → 2023-01-23 09:00 | 2023-01-23 → 2023-01-23 00:00 |  |  |  | constraint must start on 2023-01-23 → must start on 2023-01-23 00:00 |
| 69 | Rendu documentation | 2023-01-23 → 2023-01-23 09:00 | 2023-01-23 → 2023-01-23 00:00 |  |  |  | constraint must start on 2023-01-23 → must start on 2023-01-23 00:00 |
| 70 | Rendu Bilan | 2023-01-25 → 2023-01-25 09:00 | 2023-01-25 → 2023-01-25 00:00 |  |  |  | constraint must start on 2023-01-25 → must start on 2023-01-25 00:00 |
| 71 | Soutenance | 2023-01-26 → 2023-01-26 09:00 | 2023-01-26 → 2023-01-26 00:00 |  |  |  | constraint must start on 2023-01-26 → must start on 2023-01-26 00:00 |
